# Veteran Connect Post-2026 PI Claim Starter Pack MVP

Schedule from ProjectLibre, 2026-05-11 to 2027-01-28.

## Calendars

- Standard[Imported]: Mon-Fri 08:00-12:00, 13:00-17:00; Sat-Sun off.

## Resources

| Resource | Group |
| --- | --- |
| Unassigned |  |
| Product / Compliance | MVP Build |
| Cloud / DevOps | MVP Build |
| Backend | MVP Build |
| Web | MVP Build |
| AI / Knowledge | MVP Build |
| Documents | MVP Build |
| Mobile | MVP Build |
| Security / QA | MVP Build |
| Pilot / Operations | MVP Build |

## Schedule

| ID | WBS | Task | Type | Duration | Start | Finish | Predecessors | Complete | Baseline start | Baseline finish | Constraint | Resources |
| --- | --- | --- | --- | --- | --- | --- | --- | --- | --- | --- | --- | --- |
| 1 | 1 | **Phase 1: Product scope and compliance foundation** |  | 1d? | 2026-05-11 | 2026-05-11 |  | 100% | 2026-05-11 | 2026-06-03 |  |  |
| 2 | 1.1 | Confirm MVP product definition |  | 1d | 2026-05-11 | 2026-05-11 |  | 100% | 2026-05-11 | 2026-05-20 |  |  |
| 3 | 1.2 | Confirm version 1 exclusions |  | 1d | 2026-05-11 | 2026-05-11 |  | 100% | 2026-05-11 | 2026-05-11 |  |  |
| 4 | 1.3 | Define supported post-2026 claim scenarios |  | 1d | 2026-05-11 | 2026-05-11 | 3 | 100% | 2026-05-12 | 2026-05-12 |  |  |
| 5 | 1.4 | Draft disclaimer and AI-use wording |  | 1d? | 2026-05-11 | 2026-05-11 | 4 | 100% | 2026-05-13 | 2026-05-13 |  |  |
| 6 | 1.5 | Define first user journey |  | 1d? | 2026-05-11 | 2026-05-11 | 5 | 100% | 2026-05-14 | 2026-05-14 |  |  |
| 7 | 1.6 | Define MVP feature list |  | 1d? | 2026-05-11 | 2026-05-11 | 6 | 100% | 2026-05-15 | 2026-05-15 |  |  |
| 8 | 1.7 | Define first data objects |  | 1d? | 2026-05-11 | 2026-05-11 | 7 | 100% | 2026-05-18 | 2026-05-18 | start no earlier than 2026-05-11 |  |
| 9 | 1.8 | Define Phase 1 acceptance criteria |  | 1d? | 2026-05-11 | 2026-05-11 | 8 | 100% | 2026-05-19 | 2026-05-19 | start no earlier than 2026-05-11 |  |
| 10 | 1.9 | Review Phase 1 pack before build starts |  | 1d? | 2026-05-11 | 2026-05-11 | 9 | 100% | 2026-05-20 | 2026-05-20 |  |  |
| 11 | 2 | **Phase 2: Google Cloud foundation** |  | 2d? | 2026-05-11 | 2026-05-12 |  | 100% | 2026-06-04 | 2026-06-17 |  |  |
| 12 | 2.1 | Create Google Cloud dev/test/prod project structure |  | 2d? | 2026-05-11 | 2026-05-12 |  | 100% | 2026-06-04 | 2026-06-05 |  | Cloud / DevOps |
| 13 | 2.2 | Enable core Google Cloud services |  | 1d? | 2026-05-11 | 2026-05-11 | 12 | 100% | 2026-06-08 | 2026-06-08 |  | Cloud / DevOps |
| 14 | 2.3 | Configure IAM, service accounts and Secret Manager |  | 2d? | 2026-05-11 | 2026-05-12 | 13 | 100% | 2026-06-09 | 2026-06-10 |  | Cloud / DevOps |
| 15 | 2.4 | Create baseline IAM/service account plan |  | 1d? | 2026-05-11 | 2026-05-11 |  | 100% |  |  |  |  |
| 16 | 2.5 | Create dev service accounts |  | 1d? | 2026-05-11 | 2026-05-11 |  | 100% |  |  |  |  |
| 17 | 2.6 | Verify dev service accounts |  | 1d? | 2026-05-11 | 2026-05-11 |  | 100% |  |  |  |  |
| 18 | 2.7 | Create Secret Manager baseline plan |  | 1d? | 2026-05-11 | 2026-05-11 |  | 100% |  |  |  |  |
| 19 | 2.8 | Create initial placeholder secrets |  | 1d? | 2026-05-11 | 2026-05-11 |  | 100% |  |  |  |  |
| 20 | 2.9 | Save IAM and Secret Manager setup notes |  | 1d? | 2026-05-11 | 2026-05-11 |  | 100% |  |  |  |  |
| 21 | 2.4 | Configure Firebase Authentication and App Check |  | 2d? | 2026-05-11 | 2026-05-12 | 14 | 100% | 2026-06-11 | 2026-06-12 |  | Cloud / DevOps |
| 22 | 2.5 | Create Cloud Run API skeleton and CI/CD |  | 2d? | 2026-05-11 | 2026-05-12 | 21 | 100% | 2026-06-15 | 2026-06-16 |  | Cloud / DevOps |
| 23 | 2.6 | Provision Cloud SQL PostgreSQL and Cloud Storage buckets |  | 1d? | 2026-05-11 | 2026-05-11 | 22 | 100% | 2026-06-17 | 2026-06-17 |  | Cloud / DevOps |
| 24 | 2.13 | Connect Cloud Run API to Cloud SQL and Secret Manager |  | 1d? | 2026-05-11 | 2026-05-11 |  | 100% |  |  |  |  |
| 25 | 2.M | Milestone: Phase 2 complete | milestone | 0d? | 2026-05-11 | 2026-05-11 | 23 | 100% | 2026-06-17 | 2026-06-17 |  | Cloud / DevOps |

Notes:
- 1: MVP boundaries, post-2026 claim scenarios, disclaimers, privacy wording and first user journey are agreed.
- 2: Required before build starts
- 3: Locks out scoring, compensation estimates and outcome prediction
- 4: Defines new condition, worsening, new plus existing, evidence prep and unsure scenarios
- 5: Required before onboarding and AI outputs
- 6: Provides build path for wireframes and API design
- 7: Locks initial build scope
- 8: Feeds database schema planning
- 9: Defines done for Phase 1
- 10: Final gate before Phase 2 cloud setup
- 11: Cloud Run, Cloud SQL, Cloud Storage, Firebase Authentication, Secret Manager and CI/CD foundation are working in dev/test.
- 12: Set up initial environment separation and naming conventions. New Google Cloud project creation failed due to project quota. Plan B adopted: use existing project dva-sop-dev with logical environment prefixes vapi-dev, vapi-test and vapi-prod. Split into separate projects later after quota increase.
- 13: Enable Cloud Run, Cloud SQL, Cloud Storage, Secret Manager, Cloud Build, Artifact Registry, Vertex AI, Document AI, Logging and Monitoring.
- 14: Set least-privilege service accounts and store all secrets outside source control.
- 21: Set up auth for web/mobile and basic client abuse protection.
- 22: Deploy a minimal ASP.NET Core API to Cloud Run from source control.
- 23: Create private storage buckets and initial database instance.
- 25: Cloud Run, Cloud SQL, Cloud Storage, Firebase Authentication, Secret Manager and CI/CD foundation are working in dev/test.

| ID | WBS | Task | Type | Duration | Start | Finish | Predecessors | Complete | Baseline start | Baseline finish | Resources |
| --- | --- | --- | --- | --- | --- | --- | --- | --- | --- | --- | --- |
| 26 | 3 | **Phase 3: Core backend and database** |  | 14d? | 2026-05-11 | 2026-05-28 |  | 50% | 2026-06-18 | 2026-07-15 |  |
| 27 | 3.1 | Create database schema and migrations |  | 3d? | 2026-05-11 | 2026-05-13 | 25 | 100% | 2026-06-18 | 2026-06-22 | Backend |
| 28 | 3.2 | Implement Firebase token verification and user service |  | 3d? | 2026-05-11 | 2026-05-13 | 27 | 100% | 2026-06-23 | 2026-06-25 | Backend |
| 29 | 3.3 | Build claim workspace API (CRUD) |  | 4d? | 2026-05-11 | 2026-05-14 | 28 | 100% | 2026-06-26 | 2026-07-01 | Backend |
| 30 | 3.4 | Build condition and accepted-condition history APIs |  | 4d? | 2026-05-15 | 2026-05-20 | 29 |  | 2026-07-02 | 2026-07-07 | Backend |
| 31 | 3.5 | Build evidence metadata and audit APIs |  | 3d? | 2026-05-21 | 2026-05-25 | 30 |  | 2026-07-08 | 2026-07-10 | Backend |
| 32 | 3.6 | Add backend tests and API documentation |  | 3d? | 2026-05-26 | 2026-05-28 | 31 |  | 2026-07-13 | 2026-07-15 | Backend |
| 33 | 3.M | Milestone: Phase 3 complete | milestone | 0d? | 2026-05-28 | 2026-05-28 | 32 |  | 2026-07-15 | 2026-07-15 | Backend |
| 34 | 4 | **Phase 4: Web MVP shell** |  | 15d? | 2026-05-29 | 2026-06-18 |  |  | 2026-07-16 | 2026-08-05 |  |
| 35 | 4.1 | Create Next.js app scaffolding and routing |  | 2d? | 2026-05-29 | 2026-06-01 | 33 |  | 2026-07-16 | 2026-07-17 | Web |
| 36 | 4.2 | Build login and session UI |  | 3d? | 2026-06-02 | 2026-06-04 | 35 |  | 2026-07-20 | 2026-07-22 | Web |
| 37 | 4.3 | Build dashboard and claim workspace list |  | 3d? | 2026-06-05 | 2026-06-09 | 36 |  | 2026-07-23 | 2026-07-27 | Web |
| 38 | 4.4 | Build new claim and pathway selector |  | 3d? | 2026-06-10 | 2026-06-12 | 37 |  | 2026-07-28 | 2026-07-30 | Web |
| 39 | 4.5 | Build condition intake UI |  | 3d? | 2026-06-15 | 2026-06-17 | 38 |  | 2026-07-31 | 2026-08-04 | Web |
| 40 | 4.6 | Build evidence checklist shell |  | 1d? | 2026-06-18 | 2026-06-18 | 39 |  | 2026-08-05 | 2026-08-05 | Web |
| 41 | 4.M | Milestone: Phase 4 complete | milestone | 0d? | 2026-06-18 | 2026-06-18 | 40 |  | 2026-08-05 | 2026-08-05 | Web |
| 42 | 5 | **Phase 5: GARP M-aware question engine** |  | 20d? | 2026-06-19 | 2026-07-16 |  |  | 2026-08-06 | 2026-09-02 |  |
| 43 | 5.1 | Create question template model and renderer |  | 3d? | 2026-06-19 | 2026-06-23 | 41 |  | 2026-08-06 | 2026-08-10 | Product / Compliance |
| 44 | 5.2 | Build diagnosis, symptoms and treatment groups |  | 4d? | 2026-06-24 | 2026-06-29 | 43 |  | 2026-08-11 | 2026-08-14 | Product / Compliance |
| 45 | 5.3 | Build stability, functional, lifestyle and work impact groups |  | 5d? | 2026-06-30 | 2026-07-06 | 44 |  | 2026-08-17 | 2026-08-21 | Product / Compliance |
| 46 | 5.4 | Build worsening and previous compensation groups |  | 4d? | 2026-07-07 | 2026-07-10 | 45 |  | 2026-08-24 | 2026-08-27 | Product / Compliance |
| 47 | 5.5 | Add save/resume validation and structured summary |  | 4d? | 2026-07-13 | 2026-07-16 | 46 |  | 2026-08-28 | 2026-09-02 | Product / Compliance |
| 48 | 5.M | Milestone: Phase 5 complete | milestone | 0d? | 2026-07-16 | 2026-07-16 | 47 |  | 2026-09-02 | 2026-09-02 | Product / Compliance |
| 49 | 6 | **Phase 6: Evidence upload and gap tracker** |  | 15d? | 2026-07-17 | 2026-08-06 |  |  | 2026-09-03 | 2026-09-23 |  |
| 50 | 6.1 | Build signed upload and download URL flow |  | 3d? | 2026-07-17 | 2026-07-21 | 48 |  | 2026-09-03 | 2026-09-07 | Backend |
| 51 | 6.2 | Build evidence item tagging and condition linking |  | 3d? | 2026-07-22 | 2026-07-24 | 50 |  | 2026-09-08 | 2026-09-10 | Backend |
| 52 | 6.3 | Build evidence status workflow |  | 3d? | 2026-07-27 | 2026-07-29 | 51 |  | 2026-09-11 | 2026-09-15 | Backend |
| 53 | 6.4 | Build evidence gap rules engine |  | 4d? | 2026-07-30 | 2026-08-04 | 52 |  | 2026-09-16 | 2026-09-21 | Backend |
| 54 | 6.5 | Build gap dashboard and reminder prompts |  | 2d? | 2026-08-05 | 2026-08-06 | 53 |  | 2026-09-22 | 2026-09-23 | Backend |
| 55 | 6.M | Milestone: Phase 6 complete | milestone | 0d? | 2026-08-06 | 2026-08-06 | 54 |  | 2026-09-23 | 2026-09-23 | Backend |

Notes:
- 26: Backend can create users, claims, conditions, accepted-condition history, evidence metadata and audit events.
- 27: Implement users, claim_workspaces, conditions, accepted_condition_history, evidence_items, question_responses, evidence_gaps, ai_outputs, generated_documents and audit_events.
- 28: Verify identity tokens and map Firebase users to internal users.
- 29: Create, list, read and update post-2026 claim workspaces.
- 30: Capture condition details and previous VEA/DRCA/MRCA accepted condition history where relevant.
- 31: Store evidence records and auditable user/system actions.
- 32: Add smoke tests, basic API contract docs and error handling.
- 33: Backend can create users, claims, conditions, accepted-condition history, evidence metadata and audit events.
- 34: A user can log in, create a claim workspace, select a pathway and enter basic condition details in the web app.
- 35: Set up the web app structure, protected routes and base layout.
- 36: Connect Firebase sign-in to the backend session flow.
- 37: Show claim workspaces and basic workspace status.
- 38: Implement the post-2026 scenario selector as the first key workflow screen.
- 39: Capture initial condition details and diagnosis status.
- 40: Show the initial evidence checklist placeholder linked to a claim workspace.
- 41: A user can log in, create a claim workspace, select a pathway and enter basic condition details in the web app.
- 42: The app guides the user through structured questions and produces a useful evidence summary without calculating points.
- 43: Make question groups configurable instead of hard-coded in screen logic.
- 44: Capture condition identity, diagnosis status, symptoms, treatment and medications.
- 45: Collect structured daily life and work impact evidence in plain English.
- 46: Capture previous DVA decision/assessment context and what has changed.
- 47: Generate a structured summary from saved answers for later AI and document output.
- 48: The app guides the user through structured questions and produces a useful evidence summary without calculating points.
- 49: Users can upload evidence, tag it, link it to conditions and see missing-evidence prompts.
- 50: Keep files private and access them through controlled signed URLs.
- 51: Let users categorise documents and attach them to a condition.
- 52: Track missing, uploaded, requested, confirmed and not-required states.
- 53: Flag missing diagnosis evidence, treatment evidence, previous assessment letters, doctor reports and worsening evidence.
- 54: Display evidence gaps in a veteran-friendly checklist view.
- 55: Users can upload evidence, tag it, link it to conditions and see missing-evidence prompts.

| ID | WBS | Task | Type | Duration | Start | Finish | Predecessors | Baseline start | Baseline finish | Resources |
| --- | --- | --- | --- | --- | --- | --- | --- | --- | --- | --- |
| 56 | 7 | **Phase 7: AI/RAG knowledge base** |  | 25d? | 2026-07-17 | 2026-08-20 |  | 2026-09-03 | 2026-10-07 |  |
| 57 | 7.1 | Create approved source registry and knowledge base structure |  | 4d? | 2026-07-17 | 2026-07-22 | 48 | 2026-09-03 | 2026-09-08 | AI / Knowledge |
| 58 | 7.2 | Load GARP M, DVA reform references and internal templates |  | 4d? | 2026-07-23 | 2026-07-28 | 57 | 2026-09-09 | 2026-09-14 | AI / Knowledge |
| 59 | 7.3 | Build RAG retrieval API |  | 5d? | 2026-07-29 | 2026-08-04 | 58 | 2026-09-15 | 2026-09-21 | AI / Knowledge |
| 60 | 7.4 | Build prompt templates and safety guardrails |  | 4d? | 2026-08-05 | 2026-08-10 | 59 | 2026-09-22 | 2026-09-25 | AI / Knowledge |
| 61 | 7.5 | Generate veteran statement and worsening summary drafts |  | 4d? | 2026-08-11 | 2026-08-14 | 60 | 2026-09-28 | 2026-10-01 | AI / Knowledge |
| 62 | 7.6 | Generate doctor questions, evidence gap summary and doctor letter |  | 4d? | 2026-08-17 | 2026-08-20 | 61 | 2026-10-02 | 2026-10-07 | AI / Knowledge |
| 63 | 7.M | Milestone: Phase 7 complete | milestone | 0d? | 2026-08-20 | 2026-08-20 | 62 | 2026-10-07 | 2026-10-07 | AI / Knowledge |
| 64 | 8 | **Phase 8: Claim Starter Pack document generation** |  | 15d? | 2026-08-21 | 2026-09-10 |  | 2026-10-08 | 2026-10-28 |  |
| 65 | 8.1 | Design DOCX starter pack templates |  | 4d? | 2026-08-21 | 2026-08-26 | 55, 63 | 2026-10-08 | 2026-10-13 | Documents |
| 66 | 8.2 | Build document generation service |  | 4d? | 2026-08-27 | 2026-09-01 | 65 | 2026-10-14 | 2026-10-19 | Documents |
| 67 | 8.3 | Add PDF conversion and storage versioning |  | 3d? | 2026-09-02 | 2026-09-04 | 66 | 2026-10-20 | 2026-10-22 | Documents |
| 68 | 8.4 | Add document download signed URL flow |  | 2d? | 2026-09-07 | 2026-09-08 | 67 | 2026-10-23 | 2026-10-26 | Documents |
| 69 | 8.5 | Enforce reviewed-only content and test exports |  | 2d? | 2026-09-09 | 2026-09-10 | 68 | 2026-10-27 | 2026-10-28 | Documents |
| 70 | 8.M | Milestone: Phase 8 complete | milestone | 0d? | 2026-09-10 | 2026-09-10 | 69 | 2026-10-28 | 2026-10-28 | Documents |
| 71 | 9 | **Phase 9: Doctor guidance pack** |  | 10d? | 2026-09-11 | 2026-09-24 |  | 2026-10-29 | 2026-11-11 |  |
| 72 | 9.1 | Design doctor guidance pack template |  | 3d? | 2026-09-11 | 2026-09-15 | 70 | 2026-10-29 | 2026-11-02 | Documents |
| 73 | 9.2 | Build clinical question generation workflow |  | 3d? | 2026-09-16 | 2026-09-18 | 72 | 2026-11-03 | 2026-11-05 | Documents |
| 74 | 9.3 | Add doctor-specific disclaimer and review checklist |  | 2d? | 2026-09-21 | 2026-09-22 | 73 | 2026-11-06 | 2026-11-09 | Documents |
| 75 | 9.4 | Export and test doctor guidance pack |  | 2d? | 2026-09-23 | 2026-09-24 | 74 | 2026-11-10 | 2026-11-11 | Documents |
| 76 | 9.M | Milestone: Phase 9 complete | milestone | 0d? | 2026-09-24 | 2026-09-24 | 75 | 2026-11-11 | 2026-11-11 | Documents |
| 77 | 10 | **Phase 10: Admin knowledge and template manager** |  | 20d? | 2026-08-21 | 2026-09-17 |  | 2026-10-08 | 2026-11-04 |  |
| 78 | 10.1 | Build admin roles and access control |  | 3d? | 2026-08-21 | 2026-08-25 | 63 | 2026-10-08 | 2026-10-12 | Backend |
| 79 | 10.2 | Build source metadata manager |  | 4d? | 2026-08-26 | 2026-08-31 | 78 | 2026-10-13 | 2026-10-16 | Backend |
| 80 | 10.3 | Build question and document template editor |  | 5d? | 2026-09-01 | 2026-09-07 | 79 | 2026-10-19 | 2026-10-23 | Backend |
| 81 | 10.4 | Build prompt and disclaimer versioning |  | 4d? | 2026-09-08 | 2026-09-11 | 80 | 2026-10-26 | 2026-10-29 | Backend |
| 82 | 10.5 | Build knowledge base audit review view |  | 4d? | 2026-09-14 | 2026-09-17 | 81 | 2026-10-30 | 2026-11-04 | Backend |
| 83 | 10.M | Milestone: Phase 10 complete | milestone | 0d? | 2026-09-17 | 2026-09-17 | 82 | 2026-11-04 | 2026-11-04 | Backend |

Notes:
- 56: The app generates grounded drafts from user facts and approved knowledge only, with source references and review warnings.
- 57: Store source metadata, versioning, titles, URLs, summaries and approved excerpts/templates.
- 58: Seed the first approved knowledge collection and plain-English templates.
- 59: Retrieve relevant source material before asking Gemini to draft content.
- 60: Prevent outcome predictions, GARP scoring, fake medical facts and unsupported claims.
- 61: Create first AI drafting workflows from user-entered facts.
- 62: Create additional AI outputs for the starter pack and doctor prep workflow.
- 63: The app generates grounded drafts from user facts and approved knowledge only, with source references and review warnings.
- 64: The app generates and stores a DOCX/PDF Post-2026 PI Claim Starter Pack using confirmed content only.
- 65: Create cover page, disclaimer, condition summary, evidence checklist, gap tracker, statement draft and review checklist sections.
- 66: Generate DOCX from structured claim workspace data and approved drafts.
- 67: Create PDF output and keep document versions in Cloud Storage.
- 68: Allow secure document download from the web/mobile clients.
- 69: Ensure only user-confirmed answers and approved AI drafts are exported.
- 70: The app generates and stores a DOCX/PDF Post-2026 PI Claim Starter Pack using confirmed content only.
- 71: The app generates a doctor-facing guidance pack with clinical questions and careful disclaimers.
- 72: Create a separate doctor-facing document structure.
- 73: Use condition facts and evidence gaps to prepare doctor appointment questions.
- 74: Make clear the document does not ask the doctor to provide legal advice or a DVA decision.
- 75: Generate DOCX/PDF and verify readability.
- 76: The app generates a doctor-facing guidance pack with clinical questions and careful disclaimers.
- 77: An admin can update sources, question wording, templates, prompts and disclaimers without app code changes.
- 78: Restrict knowledge/template editing to authorised admin users.
- 79: Manage approved source titles, URLs, version dates, notes and usage status.
- 80: Allow controlled updates to question text and document templates.
- 81: Version prompts and disclaimers used in AI and exported documents.
- 82: Show what source/template/prompt version was used for each AI output.
- 83: An admin can update sources, question wording, templates, prompts and disclaimers without app code changes.

| ID | WBS | Task | Type | Duration | Start | Finish | Predecessors | Baseline start | Baseline finish | Resources |
| --- | --- | --- | --- | --- | --- | --- | --- | --- | --- | --- |
| 84 | 11 | **Phase 11: Android and iOS app MVP** |  | 40d? | 2026-09-11 | 2026-11-05 |  | 2026-10-29 | 2026-12-23 |  |
| 85 | 11.1 | Create MAUI app shell and shared services |  | 5d? | 2026-09-11 | 2026-09-17 | 70 | 2026-10-29 | 2026-11-04 | Mobile |
| 86 | 11.2 | Integrate Firebase Authentication |  | 5d? | 2026-09-18 | 2026-09-24 | 85 | 2026-11-05 | 2026-11-11 | Mobile |
| 87 | 11.3 | Build dashboard and claim workspace screens |  | 6d? | 2026-09-25 | 2026-10-02 | 86 | 2026-11-12 | 2026-11-19 | Mobile |
| 88 | 11.4 | Build condition intake and question engine screens |  | 8d? | 2026-10-05 | 2026-10-14 | 87 | 2026-11-20 | 2026-12-01 | Mobile |
| 89 | 11.5 | Build evidence checklist and upload flow |  | 7d? | 2026-10-15 | 2026-10-23 | 88 | 2026-12-02 | 2026-12-10 | Mobile |
| 90 | 11.6 | Build AI draft review and document download screens |  | 6d? | 2026-10-26 | 2026-11-02 | 89 | 2026-12-11 | 2026-12-18 | Mobile |
| 91 | 11.7 | Complete Android and iOS device testing |  | 3d? | 2026-11-03 | 2026-11-05 | 90 | 2026-12-21 | 2026-12-23 | Mobile |
| 92 | 11.M | Milestone: Phase 11 complete | milestone | 0d? | 2026-11-05 | 2026-11-05 | 91 | 2026-12-23 | 2026-12-23 | Mobile |
| 93 | 12 | **Phase 12: Security, privacy and production hardening** |  | 30d? | 2026-09-11 | 2026-10-22 |  | 2026-10-29 | 2026-12-09 |  |
| 94 | 12.1 | Review RBAC enforcement and audit logging |  | 5d? | 2026-09-11 | 2026-09-17 | 70 | 2026-10-29 | 2026-11-04 | Security / QA |
| 95 | 12.2 | Build data export and deletion workflows |  | 5d? | 2026-09-18 | 2026-09-24 | 94 | 2026-11-05 | 2026-11-11 | Security / QA |
| 96 | 12.3 | Create backup and disaster recovery process |  | 4d? | 2026-09-25 | 2026-09-30 | 95 | 2026-11-12 | 2026-11-17 | Security / QA |
| 97 | 12.4 | Add rate limiting, monitoring and error alerts |  | 4d? | 2026-10-01 | 2026-10-06 | 96 | 2026-11-18 | 2026-11-23 | Security / QA |
| 98 | 12.5 | Add consent tracking and AI disclosure tracking |  | 4d? | 2026-10-07 | 2026-10-12 | 97 | 2026-11-24 | 2026-11-27 | Security / QA |
| 99 | 12.6 | Draft privacy policy, terms and support process |  | 4d? | 2026-10-13 | 2026-10-16 | 98 | 2026-11-30 | 2026-12-03 | Security / QA |
| 100 | 12.7 | Prepare penetration test and remediation buffer |  | 4d? | 2026-10-19 | 2026-10-22 | 99 | 2026-12-04 | 2026-12-09 | Security / QA |
| 101 | 12.M | Milestone: Phase 12 complete | milestone | 0d? | 2026-10-22 | 2026-10-22 | 100 | 2026-12-09 | 2026-12-09 | Security / QA |
| 102 | 13 | **Phase 13: Private pilot** |  | 30d? | 2026-11-06 | 2026-12-17 |  | 2026-12-24 | 2027-02-03 |  |
| 103 | 13.1 | Recruit and onboard private pilot users |  | 5d? | 2026-11-06 | 2026-11-12 | 83, 92, 101 | 2026-12-24 | 2026-12-30 | Pilot / Operations |
| 104 | 13.2 | Run support and feedback capture process |  | 5d? | 2026-11-13 | 2026-11-19 | 103 | 2026-12-31 | 2027-01-06 | Pilot / Operations |
| 105 | 13.3 | Test veteran claim-preparation workflow |  | 5d? | 2026-11-20 | 2026-11-26 | 104 | 2027-01-07 | 2027-01-13 | Pilot / Operations |
| 106 | 13.4 | Review doctor and advocate pack usefulness |  | 5d? | 2026-11-27 | 2026-12-03 | 105 | 2027-01-14 | 2027-01-20 | Pilot / Operations |
| 107 | 13.5 | Fix priority issues from pilot |  | 6d? | 2026-12-04 | 2026-12-11 | 106 | 2027-01-21 | 2027-01-28 | Pilot / Operations |
| 108 | 13.6 | Prepare pilot outcome report and go/no-go decision |  | 4d? | 2026-12-14 | 2026-12-17 | 107 | 2027-01-29 | 2027-02-03 | Pilot / Operations |
| 109 | 13.M | Milestone: Phase 13 complete | milestone | 0d? | 2026-12-17 | 2026-12-17 | 108 | 2027-02-03 | 2027-02-03 | Pilot / Operations |

Notes:
- 84: Android and iOS can complete the main claim starter pack workflow against the same backend as the web app.
- 85: Set up cross-platform app navigation and backend client services.
- 86: Implement login/session flow for mobile.
- 87: Show workspaces and workspace status on mobile.
- 88: Support the key evidence collection workflow on mobile.
- 89: Upload evidence files/photos and show the gap tracker.
- 90: Review AI outputs and download generated packs.
- 91: Smoke test on real/simulator devices and fix platform-specific issues.
- 92: Android and iOS can complete the main claim starter pack workflow against the same backend as the web app.
- 93: The platform is suitable for a controlled private pilot with sensitive information under strict safeguards.
- 94: Verify all user actions and sensitive operations are permissioned and logged.
- 95: Allow user data export and deletion handling.
- 96: Set backups, restore procedures and recovery expectations.
- 97: Improve abuse protection and operational visibility.
- 98: Record accepted consent and AI-use disclosure versions.
- 99: Prepare launch/pilot legal-adjacent operational material for review.
- 100: Run security review preparation and fix priority findings.
- 101: The platform is suitable for a controlled private pilot with sensitive information under strict safeguards.
- 102: Pilot evidence shows the workflow is useful, understandable, safe and worth commercialising.
- 103: Bring in a small controlled group of veterans, doctors or advocates.
- 104: Collect structured feedback and support issues.
- 105: Measure whether users can complete the claim workspace and starter pack workflow.
- 106: Get feedback on clinical questions, pack clarity and disclaimers.
- 107: Resolve critical usability, safety, content and technical issues.
- 108: Summarise findings and decide what is required before commercial launch.
- 109: Pilot evidence shows the workflow is useful, understandable, safe and worth commercialising.

| ID | WBS | Task | Type | Duration | Start | Finish | Predecessors | Baseline start | Baseline finish | Resources |
| --- | --- | --- | --- | --- | --- | --- | --- | --- | --- | --- |
| 110 | 14 | **Phase 14: Commercial launch preparation** |  | 30d? | 2026-12-18 | 2027-01-28 |  | 2027-02-04 | 2027-03-17 |  |
| 111 | 14.1 | Decide and implement billing/subscription model |  | 5d? | 2026-12-18 | 2026-12-24 | 109 | 2027-02-04 | 2027-02-10 | Pilot / Operations |
| 112 | 14.2 | Build organisation account model |  | 5d? | 2026-12-25 | 2026-12-31 | 111 | 2027-02-11 | 2027-02-17 | Pilot / Operations |
| 113 | 14.3 | Set up support inbox and help centre |  | 5d? | 2027-01-01 | 2027-01-07 | 112 | 2027-02-18 | 2027-02-24 | Pilot / Operations |
| 114 | 14.4 | Create marketing site and onboarding content |  | 5d? | 2027-01-08 | 2027-01-14 | 113 | 2027-02-25 | 2027-03-03 | Pilot / Operations |
| 115 | 14.5 | Prepare App Store and Play Store materials |  | 5d? | 2027-01-15 | 2027-01-21 | 114 | 2027-03-04 | 2027-03-10 | Pilot / Operations |
| 116 | 14.6 | Complete launch readiness and production operations |  | 5d? | 2027-01-22 | 2027-01-28 | 115 | 2027-03-11 | 2027-03-17 | Pilot / Operations |
| 117 | 14.M | Milestone: Phase 14 complete | milestone | 0d? | 2027-01-28 | 2027-01-28 | 116 | 2027-03-17 | 2027-03-17 | Pilot / Operations |

Notes:
- 110: The product can onboard paying users, support them and operate reliably in production.
- 111: Add payment or subscription flow once the pilot value is proven.
- 112: Prepare for advocate/provider/organisation access if required.
- 113: Create operational support channels and self-help content.
- 114: Explain the product safely and clearly without overclaiming.
- 115: Prepare screenshots, copy, privacy details and review material.
- 116: Confirm monitoring, incident response, backups, support and release process.
- 117: The product can onboard paying users, support them and operate reliably in production.
